Schedule from OmniPlan.
Project start 2017-04-20

## Resources

| Resource | Group |
| --- | --- |
| 资源 1 | staff |
| 设备 1 | equipment |
| 素材 1 | material |
| 群组 1 | group |
| 文安国 | staff |
| 吴海涛 | staff |
| 黄浩浩 | staff |
| 向勇 | staff |
| 明亚兰 | staff |
| 宋子秀 | staff |

## Schedule

| ID | WBS | Task | Predecessors | Complete | Constraint | Resources | Work | Actual work |
| --- | --- | --- | --- | --- | --- | --- | --- | --- |
| 1 | 1 | **DevOps项目二期** |  |  | start no earlier than 2017-09-21 |  |  |  |
| 2 | 1.1 | **设计** |  |  | start no earlier than 2017-09-22 |  |  |  |
| 3 | 1.1.1 | 架构设计 |  | 100% | start no earlier than 2017-09-22 | 文安国 | 8h | 8h |
| 4 | 1.1.2 | 原型设计 |  | 100% | start no earlier than 2017-09-26 | 文安国 | 32h | 32h |
| 5 | 1.2 | **编码** |  |  | start no earlier than 2017-09-25 |  |  |  |
| 6 | 1.2.1 | **第一阶段** |  |  | start no earlier than 2017-09-26 |  |  |  |
| 7 | 1.2.1.1 | **集群管理** |  |  | start no earlier than 2017-09-25 |  |  |  |
| 8 | 1.2.1.1.1 | 集群概览 |  | 100% | start no earlier than 2017-09-25 | 黄浩浩 | 16h | 16h |
| 9 | 1.2.1.1.2 | 主机列表 | 8 | 100% |  | 吴海涛 | 24h | 24h |
| 10 | 1.2.1.1.3 | 主机详情 | 9 | 100% | start no earlier than 2017-09-25 | 向勇 | 32h | 32h |
| 11 | 1.2.1.2 | **首页** |  |  |  |  |  |  |
| 12 | 1.2.1.2.1 | 待办任务 |  | 100% | start no earlier than 2017-09-25 | 明亚兰; 宋子秀 | 40h | 40h |
| 13 | 1.2.1.2.2 | 资料文库 | 12 |  | start no earlier than 2017-09-22 | 宋子秀; 明亚兰 | 40h |  |
| 14 | 1.2.1.3 | **开发管理** | 7 |  |  |  |  |  |
| 15 | 1.2.1.3.1 | 项目管理 |  |  | start no earlier than 2017-09-25 | 向勇 | 8h |  |
| 16 | 1.2.1.4 | **运维监控** | 7 |  | start no earlier than 2017-09-25 |  |  |  |
| 17 | 1.2.1.4.1 | 正式环境监控 |  |  | start no earlier than 2017-09-27 | 黄浩浩 | 24h |  |
| 18 | 1.2.1.4.2 | 正式环境部署 | 17 |  | start no earlier than 2017-09-26 | 黄浩浩 | 8h |  |
| 19 | 1.2.1.4.3 | 灰度环境监控 |  |  |  | 向勇 | 32h |  |
| 20 | 1.2.1.4.4 | 灰度环境发布 | 19 |  | start no earlier than 2017-09-26 | 向勇 | 8h |  |
| 21 | 1.2.1.4.5 | 流量监控 |  |  | start no earlier than 2017-09-26 | 文安国 | 8h |  |
| 22 | 1.2.1.4.6 | 动态扩缩容 | 21 |  | start no earlier than 2017-09-26 | 文安国 | 24h |  |
| 23 | 1.2.1.4.7 | 蓝绿部署 | 22 |  | start no earlier than 2017-09-26 | 文安国 | 24h |  |
| 24 | 1.2.1.4.8 | 部署回滚 | 23 |  | start no earlier than 2017-09-26 | 文安国 | 24h |  |
| 25 | 1.2.1.4.9 | 策略配置 |  |  | start no earlier than 2017-09-25 | 吴海涛 | 24h |  |

| ID | WBS | Task | Predecessors | Constraint | Resources | Work |
| --- | --- | --- | --- | --- | --- | --- |
| 26 | 1.2.1.5 | **能力开放** | 16 | start no earlier than 2017-10-09 |  |  |
| 27 | 1.2.1.5.1 | 镜像仓库 |  | start no earlier than 2017-09-26 | 吴海涛 | 8h |
| 28 | 1.2.1.5.2 | 镜像详情 | 27 | start no earlier than 2017-09-26 | 吴海涛 | 8h |
| 29 | 1.2.1.5.3 | 应用市场 | 28 | start no earlier than 2017-10-11 | 吴海涛 | 8h |
| 30 | 1.2.1.6 | **服务管理** | 16 | start no earlier than 2017-10-09 |  |  |
| 31 | 1.2.1.6.1 | 资源概览 |  | start no earlier than 2017-09-26 |  | 24h |
| 32 | 1.2.1.6.2 | 资源列表 | 31 | start no earlier than 2017-09-26 |  | 24h |
| 33 | 1.2.2 | **第二阶段** | 6 | start no earlier than 2017-09-26 |  |  |
| 34 | 1.2.2.1 | **运维监控** |  | start no earlier than 2017-09-26 |  |  |
| 35 | 1.2.2.1.1 | 负载均衡 |  | start no earlier than 2017-10-13 | 文安国 | 8h |
| 36 | 1.2.2.1.2 | 流量分配 |  | start no earlier than 2017-09-26 | 文安国 | 8h |
